# DC module

Schedule from a web Gantt chart, 2026-08-19 to 2026-11-13.
Every day is a working day

## Schedule

| ID | WBS | Task | Type | Duration | Start | Finish | Complete | Status |
| --- | --- | --- | --- | --- | --- | --- | --- | --- |
| 2 | 1 | **0. SDV rework** | fixed start, fixed end | 20d | 2026-08-19 | 2026-09-07 | 51% |  |
| 3 | 1.1 | Plan A: 增加锡重新回流 |  | 1d | 2026-08-19 | 2026-08-19 | 100% | failed |
| 4 | 1.2 | Plan B：小锡炉返修 |  | 1d | 2026-08-19 | 2026-08-19 | 100% | failed |
| 5 | 1.3 | **Plan C: 波峰焊返修** |  | 14d | 2026-08-25 | 2026-09-07 | 47% |  |
| 6 | 1.3.1 | C.1 波峰焊治具到达 |  | 1d | 2026-08-25 | 2026-08-25 | 100% | done |
| 7 | 1.3.2 | C.2 验证 |  | 3d | 2026-08-25 | 2026-08-27 | 100% | done |
| 8 | 1.3.3 | C.3 返修 |  | 3d | 2026-08-25 | 2026-08-27 | 100% |  |
| 9 | 1.3.4 | C.4 出货 |  | 14d | 2026-08-25 | 2026-09-07 | 20% |  |
| 10 | 2 | **1. SDV-SIT DC module soldering study** |  | 51d | 2026-08-25 | 2026-10-14 | 9% |  |
| 11 | 2.1 | 1.0 Origial Gerber PCB寄送 | fixed start, fixed end | 22d | 2026-08-25 | 2026-09-15 | 10% |  |
| 12 | 2.2 | **1.1 ReGerber 评估** | fixed start, fixed end | 51d | 2026-08-25 | 2026-10-14 | 28% |  |
| 13 | 2.2.1 | 1.1.1 建议减少PTH连接的铜面层数 |  | 3d | 2026-08-25 | 2026-08-27 | 100% | done |
| 14 | 2.2.2 | 1.1.2 Placement底面元器件避让 |  | 10d | 2026-08-25 | 2026-09-03 | 100% | done |
| 15 | 2.2.3 | 1.1.3 G.O |  | 3d | 2026-09-02 | 2026-09-04 | 100% | done |
| 16 | 2.2.4 | 1.1.4 PCB生产 |  | 27d | 2026-09-04 | 2026-09-30 |  | waiting |
| 17 | 2.2.5 | 1.14 PCB运送 |  | 14d | 2026-10-01 | 2026-10-14 |  | waiting |
| 18 | 2.3 | **1.2 验证器件调拨** | fixed start, fixed end | 28d | 2026-09-02 | 2026-09-29 |  | waiting |
| 19 | 2.3.1 | 1.2.1 DC module调拨 |  | 5d | 2026-09-02 | 2026-09-06 |  | waiting |
| 20 | 2.3.2 | 1.2.2 电解电容调拨 |  | 5d | 2026-09-02 | 2026-09-06 |  | waiting |
| 21 | 2.3.3 | 1.2.3 器件运送 |  | 15d | 2026-09-15 | 2026-09-29 |  | waiting |
| 22 | 2.4 | **Plan A: 波峰焊验证** | fixed end | 29d | 2026-09-01 | 2026-09-29 |  | waiting |
| 23 | 2.4.1 | A.1 锡条、无卤助焊剂调拨 |  | 25d | 2026-09-01 | 2026-09-25 |  | waiting |
| 24 | 2.4.2 | A.2 波峰焊治具 |  | 25d | 2026-09-01 | 2026-09-25 |  | waiting |
| 25 | 2.4.3 | A.3 验证（原Gerber) |  | 2d | 2026-09-15 | 2026-09-16 |  | suspended |
| 26 | 2.4.4 | A.4 验证（新Gerber) |  | 2d | 2026-09-28 | 2026-09-29 |  | suspended |

Notes:
- 3: 无效果，锡在PTH孔外融化
- 4: 小锡炉放置区域无380V供电
- 7: 炉温验证Pass,部分焊点拉尖，已经增加手动维修；
- 8: 全部返修完成
- 9: 17/55 全部测试 pass;
- 11: 正在通过LCFC VN官方物流转运
- 13: √，已评估完成，可以减少3层
- 14: √，可以避让，能移开DC module范围的已移除，不能移除的已经调整到距离PTH>5mm间距
- 15: √，已释放给工厂
- 16: 20 pcs，仅验证上锡，无需功能测试，不指定材料和油墨
- 19: 正在协调

| ID | WBS | Task | Type | Duration | Start | Finish | Status |
| --- | --- | --- | --- | --- | --- | --- | --- |
| 27 | 2.5 | **Plan B: 回流焊验证** | fixed start, fixed end | 43d | 2026-09-01 | 2026-10-13 | waiting |
| 28 | 2.5.1 | B.1 扩大钢网开孔 |  | 25d | 2026-09-01 | 2026-09-25 | waiting |
| 29 | 2.5.2 | B.2 治具增加合成石挡块（3mm&5mm) |  | 25d | 2026-09-01 | 2026-09-25 | waiting |
| 30 | 2.5.3 | B.3 验证（原Gerber) |  | 2d | 2026-09-29 | 2026-09-30 | suspended |
| 31 | 2.5.4 | B.4 验证 (新Gerber) |  | 1d | 2026-10-13 | 2026-10-13 | suspended |
| 32 | 3 | SIT Build | fixed start | 1d | 2026-11-13 | 2026-11-13 | failed |
